# QL09-W - Website đặt bàn và đặt món trước cho nhà hàng tích hợp chatbot AI (Nhà hàng Ẩm thực Vườn Phố)

Schedule from MS Project XML, 2026-11-16 to 2027-01-10, status date 2026-11-29, costs in VNĐ.

## Calendars

- Standard - QL09-W 7 Ngay: Mon-Sun 08:00-12:00, 13:00-17:00. Exceptions (off unless hours are given): 2027-01-01 (Nghỉ Tết Dương lịch 2027), 2027-01-02 08:00-12:00, 13:00-17:00 (Làm bù Tết Dương lịch (Thứ Bảy 02/01/2027)).

## Resources

| Resource | Group | Rate |
| --- | --- | --- |
| Trần Hoàng Phúc (PM/SM) | Nhóm dự án 4TL | 100000 |
| Võ Đăng Khoa (PO/BA) | Nhóm dự án 4TL | 87500 |
| Nguyễn Văn Tiến (Dev Fullstack) | Nhóm dự án 4TL | 100000 |
| Nguyễn Đoàn Trường Vũ (AI Dev) | Nhóm dự án 4TL | 100000 |

## Schedule

| ID | WBS | Task | Type | Duration | Start | Finish | Predecessors | Baseline start | Baseline finish | Baseline duration | Resources | Work | Cost | Baseline cost |
| --- | --- | --- | --- | --- | --- | --- | --- | --- | --- | --- | --- | --- | --- | --- |
| 1 | 1 | **Dự án Website đặt bàn và đặt món trước cho nhà hàng tích hợp chatbot AI (QL09-W)** |  | 56d | 2026-11-16 | 2027-01-10 |  | 2026-11-16 | 2027-01-10 | 56d |  | 640h | 636,250 | 636,250 |
| 2 | 1.1 | **Sprint 0: Khởi động, khảo sát nghiệp vụ & thiết lập kỹ thuật (16/11 – 22/11/2026)** |  | 7d | 2026-11-16 | 2026-11-22 |  | 2026-11-16 | 2026-11-22 | 7d |  | 80h | 77,500 | 77,500 |
| 3 | 1.1.1 | **A. Quản lý dự án Sprint 0** |  | 7d | 2026-11-16 | 2026-11-22 |  | 2026-11-16 | 2026-11-22 | 7d |  | 20h | 20,000 | 20,000 |
| 4 | 1.1.1.1 | Lập và trình duyệt Tôn chỉ dự án (D01), Ma trận RACI (D14), Kế hoạch truyền thông (D17) |  | 2d | 2026-11-16 | 2026-11-17 |  | 2026-11-16 | 2026-11-17 | 2d | Trần Hoàng Phúc (PM/SM) [50%] | 10h | 10,000 | 10,000 |
| 5 | 1.1.1.2 | Thiết lập Jira Scrum (SCRUM), tệp MS Project, mời giảng viên & họp Kick-off |  | 2d | 2026-11-21 | 2026-11-22 | 4 | 2026-11-21 | 2026-11-22 | 2d | Trần Hoàng Phúc (PM/SM) [50%] | 10h | 10,000 | 10,000 |
| 6 | 1.1.2 | **B. Khảo sát nghiệp vụ & đặc tả sơ bộ** |  | 7d | 2026-11-16 | 2026-11-22 |  | 2026-11-16 | 2026-11-22 | 7d |  | 20h | 17,500 | 17,500 |
| 7 | 1.1.2.1 | Phỏng vấn đại diện Nhà hàng Ẩm thực Vườn Phố, khảo sát quy trình đặt bàn & sơ đồ bàn |  | 2d | 2026-11-16 | 2026-11-17 |  | 2026-11-16 | 2026-11-17 | 2d | Võ Đăng Khoa (PO/BA) [50%] | 8h | 7,000 | 7,000 |
| 8 | 1.1.2.2 | Hoàn thiện tài liệu Đặc tả yêu cầu phần mềm SRS v1.1 (FR-01 – FR-18, NFR-01 – NFR-06) |  | 2d | 2026-11-19 | 2026-11-20 | 7 | 2026-11-19 | 2026-11-20 | 2d | Võ Đăng Khoa (PO/BA) [50%] | 8h | 7,000 | 7,000 |
| 9 | 1.1.2.3 | Lập Product Backlog bản đầu trên Jira khóa SCRUM (10 Epic, 54 User Story) |  | 1d | 2026-11-22 | 2026-11-22 | 8 | 2026-11-22 | 2026-11-22 | 1d | Võ Đăng Khoa (PO/BA) [50%] | 4h | 3,500 | 3,500 |
| 10 | 1.1.3 | **C. Nghiên cứu kỹ thuật & dựng khung dự án** |  | 7d | 2026-11-16 | 2026-11-22 |  | 2026-11-16 | 2026-11-22 | 7d |  | 20h | 20,000 | 20,000 |
| 11 | 1.1.3.1 | Khởi tạo Repo GitHub private (nhánh main/develop/feature), quy tắc PR & mời GV |  | 1d | 2026-11-16 | 2026-11-16 |  | 2026-11-16 | 2026-11-16 | 1d | Nguyễn Văn Tiến (Dev Fullstack) [50%] | 4h | 4,000 | 4,000 |
| 12 | 1.1.3.2 | Dựng skeleton kiến trúc ReactJS + Python FastAPI + PostgreSQL (Docker Compose) |  | 2d | 2026-11-18 | 2026-11-19 | 11 | 2026-11-18 | 2026-11-19 | 2d | Nguyễn Văn Tiến (Dev Fullstack) [50%] | 10h | 10,000 | 10,000 |
| 13 | 1.1.3.3 | Khảo sát cổng thanh toán Sandbox (VNPay/MoMo/PayOS) & dịch vụ Email/SMS |  | 2d | 2026-11-21 | 2026-11-22 | 12 | 2026-11-21 | 2026-11-22 | 2d | Nguyễn Văn Tiến (Dev Fullstack) [50%] | 6h | 6,000 | 6,000 |
| 14 | 1.1.4 | **D. Thiết lập môi trường AI & hợp đồng API** |  | 7d | 2026-11-16 | 2026-11-22 |  | 2026-11-16 | 2026-11-22 | 7d |  | 20h | 20,000 | 20,000 |
| 15 | 1.1.4.1 | Cài đặt Ollama local, tải và kiểm tra các mô hình ngôn ngữ mở tiếng Việt có sẵn |  | 2d | 2026-11-16 | 2026-11-17 |  | 2026-11-16 | 2026-11-17 | 2d | Nguyễn Đoàn Trường Vũ (AI Dev) [50%] | 12h | 12,000 | 12,000 |
| 16 | 1.1.4.2 | Chốt Chat API JSON Contract (/api/v1/chat/*) & kiến trúc phân vùng không xung đột |  | 2d | 2026-11-21 | 2026-11-22 | 15 | 2026-11-21 | 2026-11-22 | 2d | Nguyễn Đoàn Trường Vũ (AI Dev) [50%] | 8h | 8,000 | 8,000 |
| 17 | 1.2 | ◆ Hoàn thành Sprint 0 – M1: Duyệt đề tài, tôn chỉ dự án & công cụ | milestone | 0d | 2026-11-22 | 2026-11-22 | 2 | 2026-11-22 | 2026-11-22 | 0d |  |  |  |  |
| 18 | 1.3 | **Sprint 1: Nền tảng, CSDL, Phân quyền RBAC & Benchmark AI (23/11 – 29/11/2026 · 28 SP)** |  | 7d | 2026-11-23 | 2026-11-29 | 17 | 2026-11-23 | 2026-11-29 | 7d |  | 80h | 77,500 | 77,500 |
| 19 | 1.3.1 | **E. Quản lý dự án Sprint 1** |  | 7d | 2026-11-23 | 2026-11-29 |  | 2026-11-23 | 2026-11-29 | 7d |  | 22h | 21,750 | 21,750 |
| 20 | 1.3.1.1 | Lập WBS chi tiết, lịch trình Gantt/PERT, lưu Baseline MS Project (M2) & chốt Sandbox |  | 2d | 2026-11-23 | 2026-11-24 |  | 2026-11-23 | 2026-11-24 | 2d | Trần Hoàng Phúc (PM/SM) [50%] | 18h | 18,000 | 18,000 |
| 21 | 1.3.1.2 | Chủ trì Sprint Planning, Daily Scrum, Sprint Review & Retrospective (Sprint 1) |  | 1d | 2026-11-29 | 2026-11-29 | 20 | 2026-11-29 | 2026-11-29 | 1d | Trần Hoàng Phúc (PM/SM) [50%] | 2h | 2,000 | 2,000 |
| 22 | 1.3.1.3 | Làm mịn Product Backlog (Backlog Refinement) & cập nhật trạng thái Jira (Sprint 1) |  | 1d | 2026-11-23 | 2026-11-23 |  | 2026-11-23 | 2026-11-23 | 1d | Võ Đăng Khoa (PO/BA) [50%] | 2h | 1,750 | 1,750 |
| 23 | 1.3.2 | **F. Thiết kế giao diện & chuẩn bị kiểm thử** |  | 5d | 2026-11-25 | 2026-11-29 |  | 2026-11-25 | 2026-11-29 | 5d |  | 18h | 15,750 | 15,750 |
| 24 | 1.3.2.1 | Thiết kế Wireframe & Prototype luồng chính trên Figma (US-03, Mobile & Desktop) |  | 2d | 2026-11-25 | 2026-11-26 | 22 | 2026-11-25 | 2026-11-26 | 2d | Võ Đăng Khoa (PO/BA) [50%] | 12h | 10,500 | 10,500 |
| 25 | 1.3.2.2 | Xây dựng bộ test case xác thực, phân quyền RBAC & kiểm tra tiêu chí DoR |  | 2d | 2026-11-28 | 2026-11-29 | 24 | 2026-11-28 | 2026-11-29 | 2d | Võ Đăng Khoa (PO/BA) [50%] | 6h | 5,250 | 5,250 |

| ID | WBS | Task | Type | Duration | Start | Finish | Predecessors | Baseline start | Baseline finish | Baseline duration | Resources | Work | Cost | Baseline cost |
| --- | --- | --- | --- | --- | --- | --- | --- | --- | --- | --- | --- | --- | --- | --- |
| 26 | 1.3.3 | **G. Cơ sở dữ liệu & kiến trúc nền tảng** |  | 5d | 2026-11-23 | 2026-11-27 |  | 2026-11-23 | 2026-11-27 | 5d |  | 12h | 12,000 | 12,000 |
| 27 | 1.3.3.1 | Thiết kế ERD ≥ 8 bảng & script Alembic migration core kèm ràng buộc chống trùng bàn (US-02) |  | 2d | 2026-11-23 | 2026-11-24 |  | 2026-11-23 | 2026-11-24 | 2d | Nguyễn Văn Tiến (Dev Fullstack) [50%] | 6h | 6,000 | 6,000 |
| 28 | 1.3.3.2 | Hoàn thiện khung Backend FastAPI (/health, Swagger) & Frontend ReactJS (US-01) |  | 2d | 2026-11-25 | 2026-11-26 | 27 | 2026-11-25 | 2026-11-26 | 2d | Nguyễn Văn Tiến (Dev Fullstack) [50%] | 4h | 4,000 | 4,000 |
| 29 | 1.3.3.3 | Thiết lập CI tự động build & chạy test bằng GitHub Actions (US-08) |  | 1d | 2026-11-27 | 2026-11-27 | 28 | 2026-11-27 | 2026-11-27 | 1d | Nguyễn Văn Tiến (Dev Fullstack) [50%] | 2h | 2,000 | 2,000 |
| 30 | 1.3.4 | **H. Tài khoản & phân quyền RBAC (FR-01)** |  | 2d | 2026-11-28 | 2026-11-29 |  | 2026-11-28 | 2026-11-29 | 2d |  | 8h | 8,000 | 8,000 |
| 31 | 1.3.4.1 | Xây dựng API & giao diện Đăng ký, Đăng nhập JWT, khóa sai 5 lần, Quên mật khẩu (US-04..06) |  | 1d | 2026-11-28 | 2026-11-28 | 29 | 2026-11-28 | 2026-11-28 | 1d | Nguyễn Văn Tiến (Dev Fullstack) [50%] | 4h | 4,000 | 4,000 |
| 32 | 1.3.4.2 | Phân quyền RBAC 3 vai trò (Khách hàng, Nhân viên, Quản lý) & quản lý tài khoản NV (US-07) |  | 1d | 2026-11-29 | 2026-11-29 | 31 | 2026-11-29 | 2026-11-29 | 1d | Nguyễn Văn Tiến (Dev Fullstack) [50%] | 4h | 4,000 | 4,000 |
| 33 | 1.3.5 | **I. Cơ sở dữ liệu AI & Benchmark Ollama** |  | 7d | 2026-11-23 | 2026-11-29 |  | 2026-11-23 | 2026-11-29 | 7d |  | 20h | 20,000 | 20,000 |
| 34 | 1.3.5.1 | Tạo 3 bảng AI (knowledge_docs, chat_sessions, chat_messages) & Alembic migration AI |  | 2d | 2026-11-23 | 2026-11-24 |  | 2026-11-23 | 2026-11-24 | 2d | Nguyễn Đoàn Trường Vũ (AI Dev) [50%] | 8h | 8,000 | 8,000 |
| 35 | 1.3.5.2 | Dựng OllamaClient & chạy benchmark ≥ 2 mô hình tiếng Việt trên ≥ 10 câu hỏi mẫu |  | 2d | 2026-11-28 | 2026-11-29 | 34 | 2026-11-28 | 2026-11-29 | 2d | Nguyễn Đoàn Trường Vũ (AI Dev) [50%] | 12h | 12,000 | 12,000 |
| 36 | 1.4 | ◆ Hoàn thành Sprint 1 – M2: Duyệt kế hoạch cơ sở, lưu Baseline MS Project | milestone | 0d | 2026-11-29 | 2026-11-29 | 18 | 2026-11-29 | 2026-11-29 | 0d |  |  |  |  |
| 37 | 1.5 | **Sprint 2: Quản lý Thực đơn, Sơ đồ bàn & Lõi RAG Ollama (30/11 – 06/12/2026 · 29 SP)** |  | 7d | 2026-11-30 | 2026-12-06 | 36 | 2026-11-30 | 2026-12-06 | 7d |  | 80h | 77,500 | 77,500 |
| 38 | 1.5.1 | **J. Quản lý dự án Sprint 2** |  | 7d | 2026-11-30 | 2026-12-06 |  | 2026-11-30 | 2026-12-06 | 7d |  | 22h | 21,750 | 21,750 |
| 39 | 1.5.1.1 | Lập đường cơ sở chi phí (Cost Baseline), kế hoạch quản lý rủi ro & ký duyệt model Ollama |  | 2d | 2026-11-30 | 2026-12-01 |  | 2026-11-30 | 2026-12-01 | 2d | Trần Hoàng Phúc (PM/SM) [50%] | 16h | 16,000 | 16,000 |
| 40 | 1.5.1.2 | Chủ trì Sprint Planning, Daily Scrum, Sprint Review & Retrospective (Sprint 2) |  | 1d | 2026-12-03 | 2026-12-03 | 39 | 2026-12-03 | 2026-12-03 | 1d | Trần Hoàng Phúc (PM/SM) [50%] | 2h | 2,000 | 2,000 |
| 41 | 1.5.1.3 | Cập nhật tiến độ, Burndown, Earned Value (EVM) & báo cáo tuần gửi GV (Sprint 2) |  | 1d | 2026-12-06 | 2026-12-06 | 40 | 2026-12-06 | 2026-12-06 | 1d | Trần Hoàng Phúc (PM/SM) [50%] | 2h | 2,000 | 2,000 |
| 42 | 1.5.1.4 | Làm mịn Product Backlog (Backlog Refinement) & cập nhật trạng thái Jira (Sprint 2) |  | 1d | 2026-11-30 | 2026-11-30 |  | 2026-11-30 | 2026-11-30 | 1d | Võ Đăng Khoa (PO/BA) [50%] | 2h | 1,750 | 1,750 |
| 43 | 1.5.2 | **K. Dữ liệu mẫu ẩn danh & kiểm thử Sprint 2** |  | 5d | 2026-12-02 | 2026-12-06 |  | 2026-12-02 | 2026-12-06 | 5d |  | 18h | 15,750 | 15,750 |
| 44 | 1.5.2.1 | Chuẩn hóa bộ dữ liệu mẫu ẩn danh Nhà hàng Ẩm thực Vườn Phố: thực đơn, bàn, FAQ (US-16) |  | 2d | 2026-12-02 | 2026-12-03 | 42 | 2026-12-02 | 2026-12-03 | 2d | Võ Đăng Khoa (PO/BA) [50%] | 10h | 8,750 | 8,750 |
| 45 | 1.5.2.2 | Kiểm thử chức năng thực đơn, sơ đồ bàn & nghiệm thu User Story Sprint 2 |  | 2d | 2026-12-05 | 2026-12-06 | 44 | 2026-12-05 | 2026-12-06 | 2d | Võ Đăng Khoa (PO/BA) [50%] | 8h | 7,000 | 7,000 |
| 46 | 1.5.3 | **L. Quản lý & hiển thị Thực đơn (FR-02, FR-03)** |  | 5d | 2026-11-30 | 2026-12-04 |  | 2026-11-30 | 2026-12-04 | 5d |  | 12h | 12,000 | 12,000 |
| 47 | 1.5.3.1 | API & UI Xem, tìm kiếm từ khóa và lọc thực đơn theo danh mục, giá, nhãn món (US-09, US-10) |  | 2d | 2026-11-30 | 2026-12-01 |  | 2026-11-30 | 2026-12-01 | 2d | Nguyễn Văn Tiến (Dev Fullstack) [50%] | 5h | 5,000 | 5,000 |
| 48 | 1.5.3.2 | API & UI Quản lý danh mục/món (CRUD, xóa mềm), cập nhật còn/hết & lịch sử đổi giá (US-11, US-12) |  | 2d | 2026-12-02 | 2026-12-03 | 47 | 2026-12-02 | 2026-12-03 | 2d | Nguyễn Văn Tiến (Dev Fullstack) [50%] | 5h | 5,000 | 5,000 |
| 49 | 1.5.3.3 | Viết script Python nạp dữ liệu mẫu thực đơn, khu vực và bàn vào PostgreSQL (US-16) |  | 1d | 2026-12-04 | 2026-12-04 | 48 | 2026-12-04 | 2026-12-04 | 1d | Nguyễn Văn Tiến (Dev Fullstack) [50%] | 2h | 2,000 | 2,000 |

| ID | WBS | Task | Type | Duration | Start | Finish | Predecessors | Baseline start | Baseline finish | Baseline duration | Resources | Work | Cost | Baseline cost |
| --- | --- | --- | --- | --- | --- | --- | --- | --- | --- | --- | --- | --- | --- | --- |
| 50 | 1.5.4 | **M. Quản lý khu vực & Sơ đồ bàn trực quan (FR-04)** |  | 2d | 2026-12-05 | 2026-12-06 |  | 2026-12-05 | 2026-12-06 | 2d |  | 8h | 8,000 | 8,000 |
| 51 | 1.5.4.1 | API & UI Khai báo khu vực, bàn, sức chứa, đánh dấu bàn ghép (US-13) |  | 1d | 2026-12-05 | 2026-12-05 | 49 | 2026-12-05 | 2026-12-05 | 1d | Nguyễn Văn Tiến (Dev Fullstack) [50%] | 4h | 4,000 | 4,000 |
| 52 | 1.5.4.2 | Giao diện Sơ đồ bàn trực quan kéo thả lưu tọa độ vị trí theo khu vực (US-14) |  | 1d | 2026-12-06 | 2026-12-06 | 51 | 2026-12-06 | 2026-12-06 | 1d | Nguyễn Văn Tiến (Dev Fullstack) [50%] | 4h | 4,000 | 4,000 |
| 53 | 1.5.5 | **N. Spike chọn LLM & Lõi truy xuất dữ liệu RAG (FR-13)** |  | 7d | 2026-11-30 | 2026-12-06 |  | 2026-11-30 | 2026-12-06 | 7d |  | 20h | 20,000 | 20,000 |
| 54 | 1.5.5.1 | Hoàn thiện báo cáo Spike so sánh chi phí/latency/tiếng Việt, trình duyệt model Ollama (US-15) |  | 2d | 2026-11-30 | 2026-12-01 |  | 2026-11-30 | 2026-12-01 | 2d | Nguyễn Đoàn Trường Vũ (AI Dev) [50%] | 8h | 8,000 | 8,000 |
| 55 | 1.5.5.2 | Xây dựng tầng RAG Retriever từ PostgreSQL, System Prompt & schema thẻ món JSON |  | 2d | 2026-12-05 | 2026-12-06 | 54 | 2026-12-05 | 2026-12-06 | 2d | Nguyễn Đoàn Trường Vũ (AI Dev) [50%] | 12h | 12,000 | 12,000 |
| 56 | 1.6 | ◆ Hoàn thành Sprint 2 – Demo increment thực đơn, sơ đồ bàn & chốt model Ollama | milestone | 0d | 2026-12-06 | 2026-12-06 | 37 | 2026-12-06 | 2026-12-06 | 0d |  |  |  |  |
| 57 | 1.7 | **Sprint 3: Đặt bàn chống trùng, Đặt món trước & Parser GMT+7 (07/12 – 13/12/2026 · 29 SP)** |  | 7d | 2026-12-07 | 2026-12-13 | 56 | 2026-12-07 | 2026-12-13 | 7d |  | 80h | 77,500 | 77,500 |
| 58 | 1.7.1 | **O. Quản lý dự án Sprint 3** |  | 3d | 2026-12-07 | 2026-12-09 |  | 2026-12-07 | 2026-12-09 | 3d |  | 8h | 7,750 | 7,750 |
| 59 | 1.7.1.1 | Chủ trì Sprint Planning, Daily Scrum, Sprint Review & Retrospective (Sprint 3) |  | 1d | 2026-12-07 | 2026-12-07 |  | 2026-12-07 | 2026-12-07 | 1d | Trần Hoàng Phúc (PM/SM) [50%] | 2h | 2,000 | 2,000 |
| 60 | 1.7.1.2 | Cập nhật tiến độ, Burndown, Earned Value (EVM) & báo cáo tuần gửi GV (Sprint 3) |  | 1d | 2026-12-08 | 2026-12-08 | 59 | 2026-12-08 | 2026-12-08 | 1d | Trần Hoàng Phúc (PM/SM) [50%] | 2h | 2,000 | 2,000 |
| 61 | 1.7.1.3 | Rà soát Sổ rủi ro & điều phối Hội đồng kiểm soát thay đổi CCB (Sprint 3) |  | 1d | 2026-12-09 | 2026-12-09 | 60 | 2026-12-09 | 2026-12-09 | 1d | Trần Hoàng Phúc (PM/SM) [50%] | 2h | 2,000 | 2,000 |
| 62 | 1.7.1.4 | Làm mịn Product Backlog (Backlog Refinement) & cập nhật trạng thái Jira (Sprint 3) |  | 1d | 2026-12-07 | 2026-12-07 |  | 2026-12-07 | 2026-12-07 | 1d | Võ Đăng Khoa (PO/BA) [50%] | 2h | 1,750 | 1,750 |
| 63 | 1.7.2 | **P. Đặc tả tham số, test case đồng thời & kịch bản AI** |  | 5d | 2026-12-09 | 2026-12-13 |  | 2026-12-09 | 2026-12-13 | 5d |  | 18h | 15,750 | 15,750 |
| 64 | 1.7.2.1 | Xác nhận tham số nghiệp vụ (90p, giữ 10p, cọc 30%) & viết test case đặt bàn đồng thời |  | 2d | 2026-12-09 | 2026-12-10 | 62 | 2026-12-09 | 2026-12-10 | 2d | Võ Đăng Khoa (PO/BA) [50%] | 10h | 8,750 | 8,750 |
| 65 | 1.7.2.2 | Soạn ≥ 15 mẫu hội thoại đặt bàn tự nhiên & kiểm thử luồng đặt bàn/giỏ món |  | 2d | 2026-12-12 | 2026-12-13 | 64 | 2026-12-12 | 2026-12-13 | 2d | Võ Đăng Khoa (PO/BA) [50%] | 8h | 7,000 | 7,000 |
| 66 | 1.7.3 | **Q. Đặt bàn theo khung giờ & Giữ chỗ chống trùng (FR-05)** |  | 5d | 2026-12-07 | 2026-12-11 |  | 2026-12-07 | 2026-12-11 | 5d |  | 22h | 22,000 | 22,000 |
| 67 | 1.7.3.1 | Service & API Kiểm tra bàn trống (bước 30p, lượt 90p, 2h–30 ngày, GMT+7) (US-17) |  | 1d | 2026-12-07 | 2026-12-07 |  | 2026-12-07 | 2026-12-07 | 1d | Nguyễn Văn Tiến (Dev Fullstack) [50%] | 4h | 4,000 | 4,000 |
| 68 | 1.7.3.2 | Cơ chế Giữ chỗ tạm thời 10p chống trùng bàn (DB transaction + Concurrent Test + Job hết hạn) (US-18) |  | 2d | 2026-12-08 | 2026-12-09 | 67 | 2026-12-08 | 2026-12-09 | 2d | Nguyễn Văn Tiến (Dev Fullstack) [50%] | 6h | 6,000 | 6,000 |
| 69 | 1.7.3.3 | Giao diện Đặt bàn kèm đồng hồ đếm ngược thời gian giữ chỗ (US-19) |  | 2d | 2026-12-10 | 2026-12-11 | 68 | 2026-12-10 | 2026-12-11 | 2d | Nguyễn Văn Tiến (Dev Fullstack) [50%] | 4h | 4,000 | 4,000 |
| 70 | 1.7.3.4 | Cấu hình tham số nghiệp vụ động trên hệ thống (US-20) |  | 2d | 2026-12-10 | 2026-12-11 | 61 | 2026-12-10 | 2026-12-11 | 2d | Trần Hoàng Phúc (PM/SM) [50%] | 8h | 8,000 | 8,000 |
| 71 | 1.7.4 | **R. Giỏ món đặt trước & Tính tiền cọc (FR-06)** |  | 2d | 2026-12-12 | 2026-12-13 |  | 2026-12-12 | 2026-12-13 | 2d |  | 12h | 12,000 | 12,000 |
| 72 | 1.7.4.1 | API & UI Giỏ món đặt trước (1–20 phần, khóa sửa trước 2h), lưu giá chốt & tính cọc (US-21, US-22) |  | 2d | 2026-12-12 | 2026-12-13 | 69 | 2026-12-12 | 2026-12-13 | 2d | Nguyễn Văn Tiến (Dev Fullstack) [50%] | 6h | 6,000 | 6,000 |
| 73 | 1.7.4.2 | Kiểm thử đối soát tính tiền cọc, quy tắc không đặt món & chính sách hủy trước cọc (US-22) |  | 2d | 2026-12-12 | 2026-12-13 | 70 | 2026-12-12 | 2026-12-13 | 2d | Trần Hoàng Phúc (PM/SM) [50%] | 6h | 6,000 | 6,000 |

| ID | WBS | Task | Type | Duration | Start | Finish | Predecessors | Baseline start | Baseline finish | Baseline duration | Resources | Work | Cost | Baseline cost |
| --- | --- | --- | --- | --- | --- | --- | --- | --- | --- | --- | --- | --- | --- | --- |
| 74 | 1.7.5 | **S. Parser thời gian GMT+7 & PII Masker nền tảng (FR-13, FR-14)** |  | 7d | 2026-12-07 | 2026-12-13 |  | 2026-12-07 | 2026-12-13 | 7d |  | 20h | 20,000 | 20,000 |
| 75 | 1.7.5.1 | Phát triển Parser thời gian tiếng Việt chuẩn hóa GMT+7 & Slot-filling đặt bàn (chỉ đọc FR-05) |  | 2d | 2026-12-07 | 2026-12-08 |  | 2026-12-07 | 2026-12-08 | 2d | Nguyễn Đoàn Trường Vũ (AI Dev) [50%] | 12h | 12,000 | 12,000 |
| 76 | 1.7.5.2 | Xây dựng bộ lọc che dữ liệu cá nhân PII Masker v1 & unit test AI |  | 2d | 2026-12-12 | 2026-12-13 | 75 | 2026-12-12 | 2026-12-13 | 2d | Nguyễn Đoàn Trường Vũ (AI Dev) [50%] | 8h | 8,000 | 8,000 |
| 77 | 1.8 | ◆ Hoàn thành Sprint 3 – M3: Demo v0.1 (Đặt bàn chống trùng & Đặt món trước) | milestone | 0d | 2026-12-13 | 2026-12-13 | 57 | 2026-12-13 | 2026-12-13 | 0d |  |  |  |  |
| 78 | 1.9 | **Sprint 4: Đặt cọc Sandbox, Hủy/Hoàn cọc & Triển khai Staging (14/12 – 20/12/2026 · 27 SP)** |  | 7d | 2026-12-14 | 2026-12-20 | 77 | 2026-12-14 | 2026-12-20 | 7d |  | 80h | 93,750 | 93,750 |
| 79 | 1.9.1 | **T. Quản lý dự án Sprint 4** |  | 3d | 2026-12-14 | 2026-12-16 |  | 2026-12-14 | 2026-12-16 | 3d |  | 8h | 7,750 | 7,750 |
| 80 | 1.9.1.1 | Chủ trì Sprint Planning, Daily Scrum, Sprint Review & Retrospective (Sprint 4) |  | 1d | 2026-12-14 | 2026-12-14 |  | 2026-12-14 | 2026-12-14 | 1d | Trần Hoàng Phúc (PM/SM) [50%] | 2h | 2,000 | 2,000 |
| 81 | 1.9.1.2 | Cập nhật tiến độ, Burndown, Earned Value (EVM) & báo cáo tuần gửi GV (Sprint 4) |  | 1d | 2026-12-15 | 2026-12-15 | 80 | 2026-12-15 | 2026-12-15 | 1d | Trần Hoàng Phúc (PM/SM) [50%] | 2h | 2,000 | 2,000 |
| 82 | 1.9.1.3 | Rà soát Sổ rủi ro & điều phối Hội đồng kiểm soát thay đổi CCB (Sprint 4) |  | 1d | 2026-12-16 | 2026-12-16 | 81 | 2026-12-16 | 2026-12-16 | 1d | Trần Hoàng Phúc (PM/SM) [50%] | 2h | 2,000 | 2,000 |
| 83 | 1.9.1.4 | Làm mịn Product Backlog (Backlog Refinement) & cập nhật trạng thái Jira (Sprint 4) |  | 1d | 2026-12-14 | 2026-12-14 |  | 2026-12-14 | 2026-12-14 | 1d | Võ Đăng Khoa (PO/BA) [50%] | 2h | 1,750 | 1,750 |
| 84 | 1.9.2 | **U. Kiểm thử thanh toán Sandbox & AI Staging** |  | 5d | 2026-12-16 | 2026-12-20 |  | 2026-12-16 | 2026-12-20 | 5d |  | 18h | 15,750 | 15,750 |
| 85 | 1.9.2.1 | Lập & chạy test case cổng thanh toán Sandbox, callback, chính sách hoàn cọc 24h/2h |  | 2d | 2026-12-16 | 2026-12-17 | 83 | 2026-12-16 | 2026-12-17 | 2d | Võ Đăng Khoa (PO/BA) [50%] | 10h | 8,750 | 8,750 |
| 86 | 1.9.2.2 | Kiểm thử hồi quy Sprint 1–3 & rà soát phản hồi Chatbot AI trên môi trường Staging |  | 2d | 2026-12-19 | 2026-12-20 | 85 | 2026-12-19 | 2026-12-20 | 2d | Võ Đăng Khoa (PO/BA) [50%] | 8h | 7,000 | 7,000 |
| 87 | 1.9.3 | **V. Đặt cọc trực tuyến & Xử lý Callback/Webhook (FR-07)** |  | 5d | 2026-12-14 | 2026-12-18 |  | 2026-12-14 | 2026-12-18 | 5d |  | 20h | 20,000 | 20,000 |
| 88 | 1.9.3.1 | API & UI Tạo giao dịch đặt cọc, hiển thị chính sách hủy & chuyển cổng Sandbox (US-24) |  | 1d | 2026-12-14 | 2026-12-14 |  | 2026-12-14 | 2026-12-14 | 1d | Nguyễn Văn Tiến (Dev Fullstack) [50%] | 4h | 4,000 | 4,000 |
| 89 | 1.9.3.2 | Xử lý Callback/Webhook xác thực chữ ký HMAC, chống ghi nhận trùng & xử lý trễ (US-25) |  | 2d | 2026-12-15 | 2026-12-16 | 88 | 2026-12-15 | 2026-12-16 | 2d | Nguyễn Văn Tiến (Dev Fullstack) [50%] | 6h | 6,000 | 6,000 |
| 90 | 1.9.3.3 | Cấu hình tài khoản Sandbox, đối soát giao dịch cọc/hoàn cọc & chốt lịch UAT với nhà hàng |  | 2d | 2026-12-17 | 2026-12-18 | 82 | 2026-12-17 | 2026-12-18 | 2d | Trần Hoàng Phúc (PM/SM) [50%] | 10h | 10,000 | 10,000 |
| 91 | 1.9.4 | **W. Trạng thái bàn, Hủy đặt chỗ, Email & Hạ tầng Staging (FR-04, FR-09, FR-10)** |  | 4d | 2026-12-17 | 2026-12-20 |  | 2026-12-17 | 2026-12-20 | 4d |  | 14h | 30,250 | 30,250 |
| 92 | 1.9.4.1 | Xem trạng thái bàn theo giờ (US-23), Trang Đặt chỗ của tôi & Hủy/Hoàn cọc (US-26) |  | 2d | 2026-12-17 | 2026-12-18 | 89 | 2026-12-17 | 2026-12-18 | 2d | Nguyễn Văn Tiến (Dev Fullstack) [50%] | 5h | 5,000 | 5,000 |
| 93 | 1.9.4.2 | Dịch vụ gửi Email xác nhận/hủy (retry 3 lần – US-27) & CI/CD deploy Docker Staging (US-28) |  | 2d | 2026-12-19 | 2026-12-20 | 92 | 2026-12-19 | 2026-12-20 | 2d | Nguyễn Văn Tiến (Dev Fullstack) [50%] | 5h | 5,000 | 5,000 |
| 94 | 1.9.4.3 | Đăng ký tên miền (300k), kích hoạt gói Email/SMS (200k) & thuê Cloud/VPS 45 ngày (1.125k) |  | 2d | 2026-12-19 | 2026-12-20 | 90 | 2026-12-19 | 2026-12-20 | 2d | Trần Hoàng Phúc (PM/SM) [50%] | 4h | 4,000 | 4,000 |
| 95 | 1.9.5 | **X. Đóng gói Ollama & REST API Chatbot lên Staging (FR-13)** |  | 7d | 2026-12-14 | 2026-12-20 |  | 2026-12-14 | 2026-12-20 | 7d |  | 20h | 20,000 | 20,000 |
| 96 | 1.9.5.1 | Đóng gói container Ollama lên Staging & xây dựng cơ chế fallback khi LLM gián đoạn |  | 2d | 2026-12-14 | 2026-12-15 |  | 2026-12-14 | 2026-12-15 | 2d | Nguyễn Đoàn Trường Vũ (AI Dev) [50%] | 10h | 10,000 | 10,000 |
| 97 | 1.9.5.2 | Hoàn thiện REST API /api/v1/chat/* (sessions, messages, feedback) kết nối Staging |  | 2d | 2026-12-19 | 2026-12-20 | 96 | 2026-12-19 | 2026-12-20 | 2d | Nguyễn Đoàn Trường Vũ (AI Dev) [50%] | 10h | 10,000 | 10,000 |
| 98 | 1.10 | ◆ Hoàn thành Sprint 4 – Demo increment đặt cọc Sandbox, hủy đơn & Staging live | milestone | 0d | 2026-12-20 | 2026-12-20 | 78 | 2026-12-20 | 2026-12-20 | 0d |  |  |  |  |

| ID | WBS | Task | Type | Duration | Start | Finish | Predecessors | Baseline start | Baseline finish | Baseline duration | Resources | Work | Cost | Baseline cost |
| --- | --- | --- | --- | --- | --- | --- | --- | --- | --- | --- | --- | --- | --- | --- |
| 99 | 1.11 | **Sprint 5: Vận hành Nhân viên & Chatbot AI Tư vấn Dữ liệu thật (21/12 – 27/12/2026 · 31 SP)** |  | 7d | 2026-12-21 | 2026-12-27 | 98 | 2026-12-21 | 2026-12-27 | 7d |  | 80h | 77,500 | 77,500 |
| 100 | 1.11.1 | **Y. Quản lý dự án Sprint 5** |  | 3d | 2026-12-21 | 2026-12-23 |  | 2026-12-21 | 2026-12-23 | 3d |  | 8h | 7,750 | 7,750 |
| 101 | 1.11.1.1 | Chủ trì Sprint Planning, Daily Scrum, Sprint Review & Retrospective (Sprint 5) |  | 1d | 2026-12-21 | 2026-12-21 |  | 2026-12-21 | 2026-12-21 | 1d | Trần Hoàng Phúc (PM/SM) [50%] | 2h | 2,000 | 2,000 |
| 102 | 1.11.1.2 | Cập nhật tiến độ, Burndown, Earned Value (EVM) & báo cáo tuần gửi GV (Sprint 5) |  | 1d | 2026-12-22 | 2026-12-22 | 101 | 2026-12-22 | 2026-12-22 | 1d | Trần Hoàng Phúc (PM/SM) [50%] | 2h | 2,000 | 2,000 |
| 103 | 1.11.1.3 | Rà soát Sổ rủi ro & điều phối Hội đồng kiểm soát thay đổi CCB (Sprint 5) |  | 1d | 2026-12-23 | 2026-12-23 | 102 | 2026-12-23 | 2026-12-23 | 1d | Trần Hoàng Phúc (PM/SM) [50%] | 2h | 2,000 | 2,000 |
| 104 | 1.11.1.4 | Làm mịn Product Backlog (Backlog Refinement) & cập nhật trạng thái Jira (Sprint 5) |  | 1d | 2026-12-21 | 2026-12-21 |  | 2026-12-21 | 2026-12-21 | 1d | Võ Đăng Khoa (PO/BA) [50%] | 2h | 1,750 | 1,750 |
| 105 | 1.11.2 | **Z. Chatbot AI tư vấn món & chính sách (FR-13 – phân rã đến cấp 5)** |  | 7d | 2026-12-21 | 2026-12-27 |  | 2026-12-21 | 2026-12-27 | 7d |  | 36h | 34,750 | 34,750 |
| 106 | 1.11.2.1 | **Tri thức & kịch bản hội thoại** |  | 4d | 2026-12-21 | 2026-12-24 |  | 2026-12-21 | 2026-12-24 | 4d |  | 16h | 14,750 | 14,750 |
| 107 | 1.11.2.1.1 | Kiểm duyệt tri thức thực đơn, giờ mở cửa, chính sách cọc/hủy & soạn ≥ 30 câu test AI |  | 2d | 2026-12-23 | 2026-12-24 | 104 | 2026-12-23 | 2026-12-24 | 2d | Võ Đăng Khoa (PO/BA) [50%] | 10h | 8,750 | 8,750 |
| 108 | 1.11.2.1.2 | Thiết kế System Prompt chuẩn hóa tiếng Việt, định dạng câu trả lời & chống ảo giác |  | 2d | 2026-12-21 | 2026-12-22 |  | 2026-12-21 | 2026-12-22 | 2d | Nguyễn Đoàn Trường Vũ (AI Dev) [50%] | 6h | 6,000 | 6,000 |
| 109 | 1.11.2.2 | **Back-end AI & truy xuất dữ liệu thật (RAG)** |  | 5d | 2026-12-23 | 2026-12-27 |  | 2026-12-23 | 2026-12-27 | 5d |  | 14h | 14,000 | 14,000 |
| 110 | 1.11.2.2.1 | Tích hợp dịch vụ Ollama sinh câu trả lời multi-turn & lưu lịch sử hội thoại (US-29) |  | 2d | 2026-12-23 | 2026-12-24 | 108 | 2026-12-23 | 2026-12-24 | 2d | Nguyễn Đoàn Trường Vũ (AI Dev) [50%] | 6h | 6,000 | 6,000 |
| 111 | 1.11.2.2.2 | Tư vấn món theo ngân sách, số người, nhãn món & trả về thẻ món JSON (US-30) |  | 2d | 2026-12-26 | 2026-12-27 | 110 | 2026-12-26 | 2026-12-27 | 2d | Nguyễn Đoàn Trường Vũ (AI Dev) [50%] | 8h | 8,000 | 8,000 |
| 112 | 1.11.2.3 | **Giao diện ChatWidget trên website** |  | 2d | 2026-12-21 | 2026-12-22 |  | 2026-12-21 | 2026-12-22 | 2d |  | 6h | 6,000 | 6,000 |
| 113 | 1.11.2.3.1 | Hoàn thiện ReactJS ChatWidget (thẻ món 'Thêm vào đơn', nút Hữu ích/Không hữu ích) |  | 2d | 2026-12-21 | 2026-12-22 |  | 2026-12-21 | 2026-12-22 | 2d | Nguyễn Văn Tiến (Dev Fullstack) [50%] | 6h | 6,000 | 6,000 |
| 114 | 1.11.3 | **AA. Vận hành đặt chỗ cho Nhân viên & Quản lý (FR-08)** |  | 5d | 2026-12-23 | 2026-12-27 |  | 2026-12-23 | 2026-12-27 | 5d |  | 14h | 14,000 | 14,000 |
| 115 | 1.11.3.1 | API & UI Danh sách, bộ lọc đa tiêu chí và chi tiết đơn đặt chỗ (US-31) |  | 2d | 2026-12-23 | 2026-12-24 | 113 | 2026-12-23 | 2026-12-24 | 2d | Nguyễn Văn Tiến (Dev Fullstack) [50%] | 5h | 5,000 | 5,000 |
| 116 | 1.11.3.2 | Nghiệp vụ Check-in, Hoàn thành, nhắc quá 15p chưa check-in & đánh dấu Không đến (US-32) |  | 2d | 2026-12-25 | 2026-12-26 | 115 | 2026-12-25 | 2026-12-26 | 2d | Nguyễn Văn Tiến (Dev Fullstack) [50%] | 5h | 5,000 | 5,000 |
| 117 | 1.11.3.3 | Đổi bàn/giờ chống trùng, hủy đơn ngoại lệ (Quản lý) & lưu nhật ký thay đổi (US-33) |  | 1d | 2026-12-27 | 2026-12-27 | 116 | 2026-12-27 | 2026-12-27 | 1d | Nguyễn Văn Tiến (Dev Fullstack) [50%] | 4h | 4,000 | 4,000 |
| 118 | 1.11.4 | **AB. Kiểm thử nghiệp vụ Nhân viên, Chatbot & Báo cáo giữa kỳ** |  | 4d | 2026-12-24 | 2026-12-27 |  | 2026-12-24 | 2026-12-27 | 4d |  | 22h | 21,000 | 21,000 |
| 119 | 1.11.4.1 | Kiểm thử luồng xử lý đơn của nhân viên & nghiệm thu Chatbot tư vấn dữ liệu thật |  | 2d | 2026-12-26 | 2026-12-27 | 107 | 2026-12-26 | 2026-12-27 | 2d | Võ Đăng Khoa (PO/BA) [50%] | 8h | 7,000 | 7,000 |
| 120 | 1.11.4.2 | Tổng hợp báo cáo tiến độ giữa kỳ, rà soát DoD & nghiệm thu bản phát hành v0.2 |  | 2d | 2026-12-24 | 2026-12-25 | 103 | 2026-12-24 | 2026-12-25 | 2d | Trần Hoàng Phúc (PM/SM) [50%] | 10h | 10,000 | 10,000 |
| 121 | 1.11.4.3 | Đối soát nhật ký đổi bàn/hủy ngoại lệ & chỉ số phản hồi AI trước mốc M4 |  | 2d | 2026-12-26 | 2026-12-27 | 120 | 2026-12-26 | 2026-12-27 | 2d | Trần Hoàng Phúc (PM/SM) [50%] | 4h | 4,000 | 4,000 |
| 122 | 1.12 | ◆ Hoàn thành Sprint 5 – M4: Báo cáo giữa kỳ, demo v0.2 (Vận hành NV & Chatbot AI) | milestone | 0d | 2026-12-27 | 2026-12-27 | 99 | 2026-12-27 | 2026-12-27 | 0d |  |  |  |  |

| ID | WBS | Task | Type | Duration | Start | Finish | Predecessors | Baseline start | Baseline finish | Baseline duration | Resources | Work | Cost | Baseline cost |
| --- | --- | --- | --- | --- | --- | --- | --- | --- | --- | --- | --- | --- | --- | --- |
| 123 | 1.13 | **Sprint 6: Guardrails AI, Đặt bàn qua Chat, Báo cáo & Nhắc lịch (28/12 – 03/01/2027 · 31 SP)** |  | 7d | 2026-12-28 | 2027-01-03 | 122 | 2026-12-28 | 2027-01-03 | 7d |  | 80h | 77,500 | 77,500 |
| 124 | 1.13.1 | **AC. Quản lý dự án Sprint 6** |  | 3d | 2026-12-28 | 2026-12-30 |  | 2026-12-28 | 2026-12-30 | 3d |  | 8h | 7,750 | 7,750 |
| 125 | 1.13.1.1 | Chủ trì Sprint Planning, Daily Scrum, Sprint Review & Retrospective (Sprint 6) |  | 1d | 2026-12-28 | 2026-12-28 |  | 2026-12-28 | 2026-12-28 | 1d | Trần Hoàng Phúc (PM/SM) [50%] | 2h | 2,000 | 2,000 |
| 126 | 1.13.1.2 | Cập nhật tiến độ, Burndown, Earned Value (EVM) & báo cáo tuần gửi GV (Sprint 6) |  | 1d | 2026-12-29 | 2026-12-29 | 125 | 2026-12-29 | 2026-12-29 | 1d | Trần Hoàng Phúc (PM/SM) [50%] | 2h | 2,000 | 2,000 |
| 127 | 1.13.1.3 | Rà soát Sổ rủi ro & điều phối Hội đồng kiểm soát thay đổi CCB (Sprint 6) |  | 1d | 2026-12-30 | 2026-12-30 | 126 | 2026-12-30 | 2026-12-30 | 1d | Trần Hoàng Phúc (PM/SM) [50%] | 2h | 2,000 | 2,000 |
| 128 | 1.13.1.4 | Làm mịn Product Backlog (Backlog Refinement) & cập nhật trạng thái Jira (Sprint 6) |  | 1d | 2026-12-28 | 2026-12-28 |  | 2026-12-28 | 2026-12-28 | 1d | Võ Đăng Khoa (PO/BA) [50%] | 2h | 1,750 | 1,750 |
| 129 | 1.13.2 | **AD. Guardrails AI & Đặt bàn qua hội thoại (FR-13, FR-14 – phân rã đến cấp 5)** |  | 7d | 2026-12-28 | 2027-01-03 |  | 2026-12-28 | 2027-01-03 | 7d |  | 32h | 31,000 | 31,000 |
| 130 | 1.13.2.1 | **An toàn nội dung & Bảo vệ dữ liệu (Guardrails – US-34)** |  | 4d | 2026-12-28 | 2026-12-31 |  | 2026-12-28 | 2026-12-31 | 4d |  | 16h | 15,000 | 15,000 |
| 131 | 1.13.2.1.1 | Hoàn thiện PII Masker (che tên/SĐT/email), từ chối ngoài phạm vi/y tế & rate limit |  | 2d | 2026-12-28 | 2026-12-29 |  | 2026-12-28 | 2026-12-29 | 2d | Nguyễn Đoàn Trường Vũ (AI Dev) [50%] | 8h | 8,000 | 8,000 |
| 132 | 1.13.2.1.2 | Kiểm thử ≥ 20 câu hỏi adversarial chống bịa tin và kiểm tra rò rỉ dữ liệu cá nhân |  | 2d | 2026-12-30 | 2026-12-31 | 128 | 2026-12-30 | 2026-12-31 | 2d | Võ Đăng Khoa (PO/BA) [50%] | 8h | 7,000 | 7,000 |
| 133 | 1.13.2.2 | **Đặt bàn qua chat E2E (US-35)** |  | 7d | 2026-12-28 | 2027-01-03 |  | 2026-12-28 | 2027-01-03 | 7d |  | 16h | 16,000 | 16,000 |
| 134 | 1.13.2.2.1 | Luồng hội thoại thu thập ngày/giờ/số khách GMT+7, tra bàn trống & sinh link pre-fill |  | 2d | 2027-01-02 | 2027-01-03 | 131 | 2027-01-02 | 2027-01-03 | 2d | Nguyễn Đoàn Trường Vũ (AI Dev) [50%] | 12h | 12,000 | 12,000 |
| 135 | 1.13.2.2.2 | Hỗ trợ pre-fill URL params trên trang Đặt bàn (/booking?...) & giữ state qua Login |  | 1d | 2026-12-28 | 2026-12-28 |  | 2026-12-28 | 2026-12-28 | 1d | Nguyễn Văn Tiến (Dev Fullstack) [50%] | 4h | 4,000 | 4,000 |
| 136 | 1.13.3 | **AE. Báo cáo thống kê, Chuẩn bị bếp & Nhắc lịch (FR-10, FR-11, FR-12)** |  | 6d | 2026-12-29 | 2027-01-03 |  | 2026-12-29 | 2027-01-03 | 6d |  | 16h | 16,000 | 16,000 |
| 137 | 1.13.3.1 | API & UI Báo cáo thống kê: đơn, tỷ lệ hủy/no-show, doanh thu cọc, đặt ngoài giờ (US-36) |  | 2d | 2026-12-29 | 2026-12-30 | 135 | 2026-12-29 | 2026-12-30 | 2d | Nguyễn Văn Tiến (Dev Fullstack) [50%] | 6h | 6,000 | 6,000 |
| 138 | 1.13.3.2 | Tổng hợp danh sách món đặt trước chuẩn bị cho bếp theo khung giờ, in/xuất PDF (US-37) |  | 2d | 2026-12-31 | 2027-01-01 | 137 | 2026-12-31 | 2027-01-01 | 2d | Nguyễn Văn Tiến (Dev Fullstack) [50%] | 5h | 5,000 | 5,000 |
| 139 | 1.13.3.3 | Scheduler tự động nhắc lịch trước 24 giờ và 2 giờ qua Email/SMS (retry 3 lần) (US-38) |  | 2d | 2027-01-02 | 2027-01-03 | 138 | 2027-01-02 | 2027-01-03 | 2d | Nguyễn Văn Tiến (Dev Fullstack) [50%] | 5h | 5,000 | 5,000 |
| 140 | 1.13.4 | **AF. Chuẩn bị kịch bản UAT, kiểm thử báo cáo & đóng băng tính năng** |  | 4d | 2026-12-31 | 2027-01-03 |  | 2026-12-31 | 2027-01-03 | 4d |  | 24h | 22,750 | 22,750 |
| 141 | 1.13.4.1 | Lập kịch bản UAT gửi Nhà hàng Ẩm thực Vườn Phố & đối soát số liệu báo cáo/bếp |  | 2d | 2027-01-02 | 2027-01-03 | 132 | 2027-01-02 | 2027-01-03 | 2d | Võ Đăng Khoa (PO/BA) [50%] | 10h | 8,750 | 8,750 |
| 142 | 1.13.4.2 | Kiểm tra tiêu chí Feature Freeze, rà soát bảo mật/hạ tầng & điều phối UAT nhà hàng |  | 2d | 2026-12-31 | 2027-01-01 | 127 | 2026-12-31 | 2027-01-01 | 2d | Trần Hoàng Phúc (PM/SM) [50%] | 10h | 10,000 | 10,000 |
| 143 | 1.13.4.3 | Kiểm tra nghiệm thu luồng nhắc lịch 24h/2h, sao lưu CSDL trước UAT & chốt checklist M5 |  | 2d | 2027-01-02 | 2027-01-03 | 142 | 2027-01-02 | 2027-01-03 | 2d | Trần Hoàng Phúc (PM/SM) [50%] | 4h | 4,000 | 4,000 |
| 144 | 1.14 | ◆ Hoàn thành Sprint 6 – M5: Đóng băng tính năng (Feature Freeze), tag v1.0-rc | milestone | 0d | 2027-01-03 | 2027-01-03 | 123 | 2027-01-03 | 2027-01-03 | 0d |  |  |  |  |
| 145 | 1.15 | **Sprint 7: Kiểm thử Hồi quy, UAT, Hardening & Phát hành v1.0 (04/01 – 10/01/2027 · 27 SP)** |  | 7d | 2027-01-04 | 2027-01-10 | 144 | 2027-01-04 | 2027-01-10 | 7d |  | 80h | 77,500 | 77,500 |
| 146 | 1.15.1 | **AG. Kiểm thử hệ thống, hồi quy & Chatbot 30+ câu (US-39, US-40)** |  | 2d | 2027-01-04 | 2027-01-05 |  | 2027-01-04 | 2027-01-05 | 2d |  | 14h | 13,250 | 13,250 |
| 147 | 1.15.1.1 | Chạy toàn bộ ≥ 40 test case chức năng MVP, API Postman & kiểm thử hồi quy (US-39) |  | 2d | 2027-01-04 | 2027-01-05 |  | 2027-01-04 | 2027-01-05 | 2d | Võ Đăng Khoa (PO/BA) [50%] | 6h | 5,250 | 5,250 |
| 148 | 1.15.1.2 | Chạy tự động bộ ≥ 30 câu hỏi kiểm thử Chatbot (chuẩn & dẫn dụ), đo độ chính xác ≥ 80% |  | 2d | 2027-01-04 | 2027-01-05 |  | 2027-01-04 | 2027-01-05 | 2d | Nguyễn Đoàn Trường Vũ (AI Dev) [50%] | 8h | 8,000 | 8,000 |

| ID | WBS | Task | Type | Duration | Start | Finish | Predecessors | Baseline start | Baseline finish | Baseline duration | Resources | Work | Cost | Baseline cost |
| --- | --- | --- | --- | --- | --- | --- | --- | --- | --- | --- | --- | --- | --- | --- |
| 149 | 1.15.2 | **AH. Nghiệm thu UAT thực tế tại Nhà hàng Ẩm thực Vườn Phố (US-41)** |  | 2d | 2027-01-06 | 2027-01-07 |  | 2027-01-06 | 2027-01-07 | 2d |  | 6h | 5,250 | 5,250 |
| 150 | 1.15.2.1 | Tổ chức UAT với nhân viên & quản lý nhà hàng, ghi nhận lỗi & lập biên bản UAT (US-41) |  | 2d | 2027-01-06 | 2027-01-07 | 147 | 2027-01-06 | 2027-01-07 | 2d | Võ Đăng Khoa (PO/BA) [50%] | 6h | 5,250 | 5,250 |
| 151 | 1.15.3 | **AI. Sửa lỗi UAT, Hardening & Phát hành Production v1.0 (US-42, US-44)** |  | 7d | 2027-01-04 | 2027-01-10 |  | 2027-01-04 | 2027-01-10 | 7d |  | 28h | 28,000 | 28,000 |
| 152 | 1.15.3.1 | Sửa lỗi UAT phần Core/FE/DB, hardening bảo mật (HTTPS, RBAC), test backup/restore (US-42) |  | 2d | 2027-01-04 | 2027-01-05 |  | 2027-01-04 | 2027-01-05 | 2d | Nguyễn Văn Tiến (Dev Fullstack) [50%] | 12h | 12,000 | 12,000 |
| 153 | 1.15.3.2 | Sửa Bug AI từ UAT & tối ưu độ trễ, keep_alive mô hình Ollama trên Production |  | 2d | 2027-01-07 | 2027-01-08 | 148 | 2027-01-07 | 2027-01-08 | 2d | Nguyễn Đoàn Trường Vũ (AI Dev) [50%] | 8h | 8,000 | 8,000 |
| 154 | 1.15.3.3 | Triển khai bản chính thức Production, gắn tag/release v1.0 trên GitHub & README (US-44) |  | 2d | 2027-01-09 | 2027-01-10 | 152 | 2027-01-09 | 2027-01-10 | 2d | Nguyễn Văn Tiến (Dev Fullstack) [50%] | 8h | 8,000 | 8,000 |
| 155 | 1.15.4 | **AJ. Tài liệu hướng dẫn sử dụng & Video demo (US-43, US-45)** |  | 3d | 2027-01-08 | 2027-01-10 |  | 2027-01-08 | 2027-01-10 | 3d |  | 10h | 9,250 | 9,250 |
| 156 | 1.15.4.1 | Biên soạn Hướng dẫn sử dụng chi tiết cho Khách hàng, Nhân viên, Quản lý & Chatbot (US-43) |  | 2d | 2027-01-08 | 2027-01-09 | 150 | 2027-01-08 | 2027-01-09 | 2d | Võ Đăng Khoa (PO/BA) [50%] | 6h | 5,250 | 5,250 |
| 157 | 1.15.4.2 | Quay và dựng video demo 5–7 phút toàn bộ luồng đặt bàn, đặt cọc và Chatbot AI (US-45) |  | 1d | 2027-01-10 | 2027-01-10 | 153 | 2027-01-10 | 2027-01-10 | 1d | Nguyễn Đoàn Trường Vũ (AI Dev) [50%] | 4h | 4,000 | 4,000 |
| 158 | 1.15.5 | **AK. Quản lý dự án & Kết thúc dự án Sprint 7 (US-45)** |  | 7d | 2027-01-04 | 2027-01-10 |  | 2027-01-04 | 2027-01-10 | 7d |  | 22h | 21,750 | 21,750 |
| 159 | 1.15.5.1 | Chủ trì Sprint Planning, Daily Scrum, Sprint Review & Retrospective (Sprint 7) |  | 1d | 2027-01-04 | 2027-01-04 |  | 2027-01-04 | 2027-01-04 | 1d | Trần Hoàng Phúc (PM/SM) [50%] | 2h | 2,000 | 2,000 |
| 160 | 1.15.5.2 | Cập nhật tiến độ, Burndown, Earned Value (EVM) & báo cáo tuần gửi GV (Sprint 7) |  | 2d | 2027-01-05 | 2027-01-06 | 159 | 2027-01-05 | 2027-01-06 | 2d | Trần Hoàng Phúc (PM/SM) [50%] | 2h | 2,000 | 2,000 |
| 161 | 1.15.5.3 | Rà soát Sổ rủi ro & điều phối Hội đồng kiểm soát thay đổi CCB (Sprint 7) |  | 2d | 2027-01-07 | 2027-01-08 | 160 | 2027-01-07 | 2027-01-08 | 2d | Trần Hoàng Phúc (PM/SM) [50%] | 2h | 2,000 | 2,000 |
| 162 | 1.15.5.4 | Làm mịn Product Backlog & rà soát checklist bàn giao Jira (Sprint 7) |  | 1d | 2027-01-10 | 2027-01-10 | 156 | 2027-01-10 | 2027-01-10 | 1d | Võ Đăng Khoa (PO/BA) [50%] | 2h | 1,750 | 1,750 |
| 163 | 1.15.5.5 | Tổng hợp báo cáo tổng kết dự án, bài học kinh nghiệm, đóng sổ rủi ro & chốt EVM cuối (S7) |  | 2d | 2027-01-09 | 2027-01-10 | 161 | 2027-01-09 | 2027-01-10 | 2d | Trần Hoàng Phúc (PM/SM) [50%] | 14h | 14,000 | 14,000 |
| 164 | 1.16 | ◆ Hoàn thành dự án – M6: Bảo vệ đồ án, nghiệm thu & bàn giao v1.0 (Go live) | milestone | 0d | 2027-01-10 | 2027-01-10 | 145 | 2027-01-10 | 2027-01-10 | 0d |  |  |  |  |
